# Marina Commercial Tower - Update W12

Schedule from Primavera P6, 2024-01-08 to 2024-11-15, data date 2024-03-29, A marks actual dates.
Must finish by 2024-10-31

## Schedule

| ID | WBS | Activity | Type | Duration | Start | Finish | Predecessors | Complete | Remaining | Planned start | Planned finish | Total float |
| --- | --- | --- | --- | --- | --- | --- | --- | --- | --- | --- | --- | --- |
|  | MCT | **Marina Commercial Tower** |  |  | 2024-01-08 | 2024-11-15 |  |  |  |  |  |  |
| M1000 |  | Notice to Proceed (NTP) | milestone | 0d | 2024-01-08 A | 2024-01-08 A |  | 100% |  |  |  |  |
|  | MCT.ENG | **Engineering & Approvals** |  |  | 2024-01-08 | 2024-03-15 |  |  |  |  |  |  |
| ENG1010 |  | Mobilization & Site Survey |  | 0d | 2024-01-08 A | 2024-01-19 A | M1000 | 100% |  |  |  |  |
| ENG1020 |  | Structural Foundation Shop Drawings |  | 0d | 2024-01-15 A | 2024-02-05 A | ENG1010 SS+5d | 100% |  | 2024-01-15 | 2024-02-02 |  |
| ENG1030 |  | Municipality Building Permit Approval |  | 0d | 2024-01-25 A | 2024-02-23 A | ENG1020 | 100% |  | 2024-01-22 | 2024-02-16 |  |
| ENG1040 |  | MEP Coordinated BIM Models |  | 0d | 2024-02-05 A | 2024-03-15 A |  | 100% |  | 2024-02-05 | 2024-03-08 |  |
|  | MCT.PROC | **Procurement & Subcontracts** |  |  | 2024-01-18 | 2024-04-16 |  |  |  |  |  |  |
| PRC1010 |  | Rebar & Structural Steel Supply Contract |  | 0d | 2024-01-18 A | 2024-02-16 A | ENG1010 | 100% |  | 2024-01-15 | 2024-02-09 |  |
| PRC1020 |  | Curtain Wall & Facade Long-Lead Procurement |  | 0d | 2024-02-12 A | 2024-04-12 |  | 65% | 0d | 2024-02-12 | 2024-04-05 | 4d |
| PRC1030 |  | HVAC Chillers & Main Switchgear Order |  | 0d | 2024-02-19 A | 2024-04-16 |  | 45% | 0d | 2024-02-19 | 2024-04-12 | 10d |
|  | MCT.SUB | **Substructure & Piling** |  |  | 2024-01-24 | 2024-05-17 |  |  |  |  |  |  |
| SUB1010 |  | Site Clearing & Shoring Installation |  | 0d | 2024-01-24 A | 2024-02-14 A | PRC1010 | 100% |  | 2024-01-22 | 2024-02-09 |  |
| SUB1020 |  | Mass Excavation & Dewatering |  | 0d | 2024-02-19 A | 2024-03-08 A | SUB1010 | 100% |  | 2024-02-12 | 2024-03-01 |  |
| M1010 |  | Foundation Approval Milestone | milestone | 0d | 2024-02-23 A | 2024-02-23 A | ENG1030 | 100% |  | 2024-02-16 | 2024-02-16 |  |
| SUB1030 |  | Cast Concrete Piles & Pile Caps |  | 0d | 2024-03-08 A | 2024-04-05 | SUB1020 | 80% | 0d | 2024-03-04 | 2024-03-22 | -11d |
| SUB1040 |  | Raft Foundation Waterproofing & Casting |  | 0d | 2024-04-08 | 2024-04-26 | SUB1030 |  |  | 2024-03-25 | 2024-04-12 | -11d |
| SUB1050 |  | Basement Retaining Walls & SOG |  | 0d | 2024-04-29 | 2024-05-17 | SUB1040 |  |  | 2024-04-15 | 2024-05-03 | -11d |
|  | MCT.SUP | **Superstructure & Concrete** |  |  | 2024-05-20 | 2024-08-09 |  |  |  |  |  |  |
| SUP1010 |  | Ground Floor Columns & Elevated Slab |  | 0d | 2024-05-20 | 2024-06-07 | SUB1050 |  |  | 2024-05-06 | 2024-05-24 | -11d |
| SUP1020 |  | Floors 1 to 5 Concrete Framing |  | 0d | 2024-06-10 | 2024-07-19 | SUP1010 |  |  | 2024-05-27 | 2024-07-05 | -11d |
| SUP1030 |  | Roof Slab & Parapet Casting |  | 0d | 2024-07-22 | 2024-08-09 | SUP1020 |  |  | 2024-07-08 | 2024-07-26 | -11d |
| M1020 |  | Superstructure Topping Out | milestone | 0d | 2024-08-09 | 2024-08-09 | SUP1030 |  |  | 2024-07-26 | 2024-07-26 | -11d |
|  | MCT.MEP | **MEP First Fix & Rough-in** |  |  | 2024-03-20 | 2024-08-30 |  |  |  |  |  |  |
| MEP1010 |  | Basement Underground Drainage & Conduits |  | 0d | 2024-03-20 A | 2024-04-12 | SUB1030 | 30% | 0d | 2024-03-18 | 2024-04-05 | 6d |
| MEP1020 |  | Electrical Risers & Plumbing Rough-in |  | 0d | 2024-06-17 | 2024-08-02 | SUP1020 SS+10d |  |  | 2024-06-03 | 2024-07-19 | -5d |
| MEP1030 |  | HVAC Ductwork & Fire Protection Piping |  | 0d | 2024-07-15 | 2024-08-30 | MEP1020 SS+20d |  |  | 2024-07-01 | 2024-08-16 | -7d |

| ID | WBS | Activity | Type | Duration | Start | Finish | Predecessors | Planned start | Planned finish | Total float |
| --- | --- | --- | --- | --- | --- | --- | --- | --- | --- | --- |
|  | MCT.FIN | **Architectural Finishes** |  |  | 2024-08-12 | 2024-11-01 |  |  |  |  |
| FIN1010 |  | Exterior Glazing & Curtain Wall Panels |  | 0d | 2024-08-12 | 2024-10-04 | SUP1030 | 2024-07-29 | 2024-09-20 | -9d |
| FIN1020 |  | Internal CMU Partitions & Drywall Framing |  | 0d | 2024-08-19 | 2024-10-11 | SUP1020 SS+20d | 2024-08-05 | 2024-09-27 | -6d |
| FIN1030 |  | Flooring, Ceiling & Painting Works |  | 0d | 2024-09-16 | 2024-11-01 | FIN1020 | 2024-09-02 | 2024-10-18 | -11d |
|  | MCT.CLO | **Testing & Handover** |  |  | 2024-10-07 | 2024-11-15 |  |  |  |  |
| CLO1010 |  | MEP Testing, Adjusting & Commissioning |  | 0d | 2024-10-07 | 2024-11-01 | FIN1030, MEP1030 | 2024-09-23 | 2024-10-18 | -11d |
| CLO1020 |  | Civil Defense Inspection & Authority Sign-off |  | 0d | 2024-11-04 | 2024-11-15 | CLO1010 | 2024-10-21 | 2024-10-31 | -11d |
| M1030 |  | Project Substantial Completion | milestone | 0d | 2024-11-15 | 2024-11-15 | CLO1020 | 2024-10-31 | 2024-10-31 | -11d |
